# 库存&出库模块项目开发计划

Schedule from MS Project, 2016-05-11 to 2016-06-09, A marks actual dates.
Hewlett-Packard

## Calendars

- 标准: Mon-Fri 08:00-12:00, 13:00-17:00; Sat-Sun off.

## Resources

| Resource |
| --- |
| 丁健勇 |
| 林智涛 |
| 邓国俊 |
| 赖丽华 |

## Schedule

| ID | WBS | Task | Type | Duration | Start | Finish | Predecessors | Complete | Remaining | Resources | Work | Actual work | 开发人员 |
| --- | --- | --- | --- | --- | --- | --- | --- | --- | --- | --- | --- | --- | --- |
| 1 | 1 | **库存模块** |  | 12d | 2016-05-11 A | 2016-05-26 A |  | 100% |  |  | 140h | 140h |  |
| 2 | 1.1 | 入库单增加批次号 | manual | 0.5d | 2016-05-11 A | 2016-05-11 A |  | 100% |  | 林智涛 | 4h | 4h |  |
| 3 | 1.2 | mongo环境搭建及工具类实现 | manual | 2d | 2016-05-12 A | 2016-05-13 A |  | 100% |  | 丁健勇 | 16h | 16h |  |
| 4 | 1.3 | 新增库存记录 | manual | 2d | 2016-05-16 A | 2016-05-17 A | 3, 2 | 100% |  | 丁健勇 | 16h | 16h |  |
| 5 | 1.4 | 仓库库存列表 | manual | 2d | 2016-05-18 A | 2016-05-19 A | 4 | 100% |  | 丁健勇 | 16h | 16h |  |
| 6 | 1.5 | 库存操作 | manual | 3d | 2016-05-20 A | 2016-05-24 A | 4 | 100% |  | 丁健勇 | 24h | 24h | 林智涛 |
| 7 | 1.6 | 商品&物料库存列表 | manual | 2d | 2016-05-24 A | 2016-05-25 A | 4 | 100% |  | 邓国俊 | 16h | 16h |  |
| 8 | 1.7 | 库存列表筛选 | manual | 1d | 2016-05-26 A | 2016-05-26 A | 5, 7 | 100% |  | 邓国俊 | 8h | 8h |  |
| 9 | 1.8 | 库存预警配置 | manual | 2d | 2016-05-12 A | 2016-05-13 A |  | 100% |  | 林智涛 | 16h | 16h |  |
| 10 | 1.9 | 库存预警功能 | manual | 3d | 2016-05-20 A | 2016-05-24 A | 5 | 100% |  | 林智涛 | 24h | 24h |  |
| 11 | 1.10 | 完成库存模块 | milestone, manual | 0d | 2016-05-26 A | 2016-05-26 A |  | 100% |  |  |  |  |  |
| 12 | 2 | **出库单模块** |  | 8d | 2016-05-12 A | 2016-05-23 A |  | 100% |  |  | 96h | 96h |  |
| 13 | 2.1 | 出库单基本功能 | manual | 2d | 2016-05-12 A | 2016-05-13 A |  | 100% |  | 邓国俊 | 16h | 16h |  |
| 14 | 2.2 | 出库单列表筛选 | manual | 1d | 2016-05-16 A | 2016-05-16 A | 13 | 100% |  | 邓国俊 | 8h | 8h |  |
| 15 | 2.3 | 出库单明细 | manual | 4d | 2016-05-16 A | 2016-05-19 A |  | 100% |  | 林智涛 | 32h | 32h |  |
| 16 | 2.4 | 出库单状态流转 | manual | 3d | 2016-05-16 A | 2016-05-18 A | 13 | 100% |  | 邓国俊 | 24h | 24h |  |
| 17 | 2.5 | 出库单删除功能 | manual | 1d | 2016-05-20 A | 2016-05-20 A | 13, 15 | 100% |  | 邓国俊 | 8h | 8h |  |
| 18 | 2.6 | 出库单日志 | manual | 1d | 2016-05-23 A | 2016-05-23 A | 13, 15, 16 | 100% |  | 邓国俊 | 8h | 8h |  |
| 19 | 2.7 | 完成出库单 | milestone, manual | 0d | 2016-05-23 A | 2016-05-23 A |  | 100% |  |  |  |  |  |
| 20 | 3 | **集成和部署** |  | 4d | 2016-05-25 A | 2016-05-30 |  | 25% | 3d |  | 64h | 16h |  |
| 21 | 3.1 | 集成&自测 | manual | 2d | 2016-05-25 A | 2016-05-26 |  | 50% | 1d | 丁健勇; 林智涛 | 32h | 16h |  |
| 22 | 3.2 | 设计文档&环境部署 | manual | 2d | 2016-05-27 | 2016-05-30 |  |  |  | 丁健勇; 林智涛 | 32h |  |  |
| 23 | 3.3 | 完成基础和部署 | milestone, manual | 0d | 2016-05-30 | 2016-05-30 |  |  |  |  |  |  |  |
| 24 | 4 | **项目测试** |  | 16d | 2016-05-19 | 2016-06-09 |  |  |  |  | 128h |  |  |
| 25 | 4.1 | 熟悉需求 | manual | 3d | 2016-05-19 | 2016-05-23 |  |  |  | 赖丽华 | 24h |  |  |
| 26 | 4.2 | 设计测试用例 | manual | 4d | 2016-05-24 | 2016-05-27 |  |  |  | 赖丽华 | 32h |  |  |
| 27 | 4.3 | 搭建测试环境 | manual | 1d | 2016-05-30 | 2016-05-30 |  |  |  | 赖丽华 | 8h |  |  |
| 28 | 4.4 | 功能测试 | manual | 4d | 2016-05-31 | 2016-06-03 |  |  |  | 赖丽华 | 32h |  |  |
| 29 | 4.5 | 回归测试 | manual | 3d | 2016-06-06 | 2016-06-08 |  |  |  | 赖丽华 | 24h |  |  |
| 30 | 4.6 | 编写测试报告及总结文档 | manual | 1d | 2016-06-09 | 2016-06-09 |  |  |  | 赖丽华 | 8h |  |  |
| 31 | 4.7 | 完成项目测试 | milestone, manual | 0d | 2016-06-09 | 2016-06-09 |  |  |  |  |  |  |  |
